# Planeaciónn

Schedule from MS Project, 2016-05-02 to 2016-08-12, costs in $.

## Calendars

- Estándar: Mon-Fri 09:00-13:00, 15:00-19:00; Sat 09:00-13:00; Sun off.

## Resources

| Resource | Rate |
| --- | --- |
| Administrador de proyecto | 164 |
| Analista | 118 |
| Diseñador | 93 |
| Programador | 105 |
| Tester | 117 |
| Administrador de la configuración | 113 |
| Asegurador de la calidad | 92 |
| Cliente |  |

## Schedule

| ID | WBS | Task | Type | Duration | Start | Finish | Predecessors | Total slack | Free slack | Resources | Work | Cost |
| --- | --- | --- | --- | --- | --- | --- | --- | --- | --- | --- | --- | --- |
| 1 | 1 | **Plan preeliminar** |  | 1.88d | 2016-05-02 09:00 | 2016-05-03 18:00 |  |  |  |  | 15h | 1,862 |
| 2 | 1.1 | Generar WBS del producto inicial |  | 4h | 2016-05-02 09:00 | 2016-05-02 13:00 |  | 0d |  | Analista | 4h | 472 |
| 3 | 1.2 | Generar project charter |  | 1h | 2016-05-02 15:00 | 2016-05-02 16:00 | 2 | 0d |  | Administrador de proyecto | 1h | 164 |
| 4 | 1.3 | Plan preeliminar del proyecto |  | 8h | 2016-05-02 16:00 | 2016-05-03 16:00 | 3 | 0d |  | Analista | 8h | 944 |
| 5 | 1.4 | Matriz de comunicación |  | 1h | 2016-05-03 16:00 | 2016-05-03 17:00 | 4 | 0d |  | Analista | 1h | 118 |
| 6 | 1.5 | Minuta de inicio |  | 1h | 2016-05-03 17:00 | 2016-05-03 18:00 | 5 | 0d |  | Administrador de proyecto | 1h | 164 |
| 7 | 1.6 | El WBS contiene todas las tareas a realizar para integrar el proyecto, el project charter contiene participantes(roles), presupuesto,alcance, duración , la matriz de comunicaciones contiene los responsables de elaborar los entregables y su distribución | milestone | 0d | 2016-05-02 09:00 | 2016-05-02 09:00 |  | 1.88d |  |  |  |  |
| 8 | 2 | **Site Cultura Deporte 01** |  | 79.12d | 2016-05-03 18:00 | 2016-08-12 09:00 | 1 | 0d |  |  | 191h | 22,659 |
| 9 | 2.1 | Formación del equipo |  | 8h | 2016-05-03 18:00 | 2016-05-04 18:00 | 6 | 56.94d | 0d | Administrador de proyecto | 8h | 1,312 |
| 10 | 2.2 | El equipo estara conformado con las personas que cumplan con el perfil requerido | milestone | 0d | 2016-05-03 18:00 | 2016-05-03 18:00 |  | 79.12d |  |  |  |  |
| 11 | 2.3 | **Construcción** |  | 79.12d | 2016-05-03 18:00 | 2016-08-12 09:00 | 2 | 0d |  |  | 183h | 21,347 |
| 12 | 2.3.1 | **Analisis** |  | 5.25d | 2016-05-04 18:00 | 2016-05-11 16:00 | 2 | 57.69d |  |  | 46.5h | 5,694 |
| 13 | 2.3.1.1 | **Elicitación** |  | 3.12d | 2016-05-04 18:00 | 2016-05-09 13:00 | 2 | 57.69d |  |  | 29.5h | 3,688 |
| 14 | 2.3.1.1.1 | Generar lista de proveedores |  | 2h | 2016-05-04 18:00 | 2016-05-05 10:00 | 9 | 56.94d | 0d | Analista; Administrador de proyecto | 4h | 564 |
| 15 | 2.3.1.1.2 | Evaluar proveedores de requerimientos |  | 1h | 2016-05-05 10:00 | 2016-05-05 11:00 | 14 | 56.94d | 0d | Analista; Administrador de proyecto | 2h | 282 |
| 16 | 2.3.1.1.3 | Definir estrategia de recolección de datos |  | 0.5h | 2016-05-05 11:00 | 2016-05-05 11:30 | 15 | 56.94d | 0d | Analista | 0.5h | 59 |
| 17 | 2.3.1.1.4 | Planificación de reuniones de licitación |  | 1.5h | 2016-05-05 11:30 | 2016-05-05 13:00 | 16 | 56.94d | 0d | Analista; Administrador de proyecto | 3h | 423 |
| 18 | 2.3.1.1.5 | Identificar procesos del sistema |  | 8h | 2016-05-05 15:00 | 2016-05-06 13:00 | 17 | 56.94d | 0d | Analista | 8h | 944 |
| 19 | 2.3.1.1.6 | identificar requerimientos funcionales |  | 8h | 2016-05-06 15:00 | 2016-05-07 13:00 | 18 | 56.94d | 0d | Analista | 8h | 944 |
| 20 | 2.3.1.1.7 | Identificar requerimientos no funcionales |  | 4h | 2016-05-09 09:00 | 2016-05-09 13:00 | 19 | 56.94d | 0d | Analista | 4h | 472 |
| 21 | 2.3.1.2 | **Especificación** |  | 1d | 2016-05-09 15:00 | 2016-05-10 13:00 |  | 57.69d | 0d |  | 8h | 944 |
| 22 | 2.3.1.2.1 | Evaluación de requerimientos |  | 2h | 2016-05-09 15:00 | 2016-05-09 17:00 | 20 | 56.94d | 0d | Analista | 2h | 236 |
| 23 | 2.3.1.2.2 | SRS |  | 6h | 2016-05-09 17:00 | 2016-05-10 13:00 | 22 | 56.94d |  | Analista | 6h | 708 |
| 24 | 2.3.1.3 | **Gestion de requerimientos** |  | 1.12d | 2016-05-10 15:00 | 2016-05-11 16:00 |  | 57.69d |  |  | 9h | 1,062 |
| 25 | 2.3.1.3.1 | priorizar requerimientos |  | 2h | 2016-05-10 15:00 | 2016-05-10 17:00 | 21 | 56.94d | 0d | Analista | 2h | 236 |
| 26 | 2.3.1.3.2 | Almacenar en repositorio |  | 0.5h | 2016-05-10 17:00 | 2016-05-10 17:30 | 25 | 56.94d | 0d | Analista | 0.5h | 59 |
| 27 | 2.3.1.3.3 | Asignar a desarrolladores de software |  | 1h | 2016-05-10 17:30 | 2016-05-10 18:30 | 26 | 56.94d | 0d | Analista | 1h | 118 |
| 28 | 2.3.1.3.4 | Administración de cambios de requerimientos |  | 0.5h | 2016-05-10 18:30 | 2016-05-10 19:00 | 27 | 56.94d | 0d | Analista | 0.5h | 59 |
| 29 | 2.3.1.3.5 | Administración de la trazabilidad de requerimientos |  | 5h | 2016-05-11 09:00 | 2016-05-11 16:00 | 28 | 56.94d | 0d | Analista | 5h | 590 |
| 30 | 2.3.2 | Entregar requerimientos funcionales y no funcionales, proveedores, asignacion de requerimientos | milestone | 0d | 2016-05-11 16:00 | 2016-05-11 16:00 | 29 | 72.88d |  |  |  |  |

Notes:
- 2: Definir las actividades que se realizarán durante la ejecucion del proyecto así como establecer duración, fecha de inicio, fecha de fin, recursos y costos
- 3: Especificar el alcance del proyecto, así como, los recursos y responsables de desarrollar el proyecto, el presupuesto se especifica.
- 4: Definir las tareas, los recursos, tiempos en los que se desarrollará el proyecto
- 5: Plasmar los entregables dentro del proyecto, asi como los responsables de desarrollarlos y especificar a quien se entregara y por que medio.
- 9: Integrar a cada uno de los roles necesarios para desarrollar el proyecto que cuenten con el perfil especificado
- 14: Integrar la lista con cada uno de los proveedores de los recursos materiales
- 15: Realizar una evaluación de los posibles proveedores y elegir a los más adecuados
- 16: Elegir la herramienta que se adecue a la información que se quere recolectar
- 17: Proponer las fechas de reuniones
- 18: Detallar los procesos que realizara el sistema
- 19: Referir las funciones que llevará a cabo el sistema
- 20: Describir los colores, la seguridad y todas aquellas especificaciones del sistema
- 22: Valorar cada uno de los requerimientos y excluir aquellos que no nos sirven
- 23: Integrar los requerimientos funcionales y no funcionales en el documento de especificación de requerimientos
- 25: valuar los requerimientos y definir el orden en que se realizarán
- 26: Guardar los documentos en un repositorio, accesible a todos
- 27: Repartir los requerimientos entre los roles

| ID | WBS | Task | Type | Duration | Start | Finish | Predecessors | Total slack | Free slack | Resources | Work | Cost |
| --- | --- | --- | --- | --- | --- | --- | --- | --- | --- | --- | --- | --- |
| 31 | 2.3.3 | **Planificación** |  | 3.12d | 2016-05-11 16:00 | 2016-05-16 11:00 |  | 57.69d |  |  | 32h | 4,443.5 |
| 32 | 2.3.3.1 | Definición del ciclo de vida |  | 0.5h | 2016-05-11 16:00 | 2016-05-11 16:30 | 29 | 56.94d | 0d | Analista; Administrador de proyecto; Diseñador | 1.5h | 187.5 |
| 33 | 2.3.3.2 | Definición de politicas |  | 0.5h | 2016-05-11 16:30 | 2016-05-11 17:00 | 32 | 56.94d | 0d | Administrador de proyecto | 0.5h | 82 |
| 34 | 2.3.3.3 | Actualizar plan de proyecto |  | 2h | 2016-05-11 17:00 | 2016-05-11 19:00 | 33 | 56.94d | 0d | Analista | 2h | 236 |
| 35 | 2.3.3.4 | Actualizar matriz de comunicación |  | 1h | 2016-05-12 09:00 | 2016-05-12 10:00 | 34 | 56.94d | 0d | Analista | 1h | 118 |
| 36 | 2.3.3.5 | **Estimación** |  | 0.75d | 2016-05-12 10:00 | 2016-05-12 18:00 |  | 57.69d |  |  | 6h | 754 |
| 37 | 2.3.3.5.1 | Actualizar WBS/Calendario |  | 1h | 2016-05-12 10:00 | 2016-05-12 11:00 | 35 | 56.94d | 0d | Analista | 1h | 118 |
| 38 | 2.3.3.5.2 | Diccionario del WBS |  | 4h | 2016-05-12 11:00 | 2016-05-12 17:00 | 37 | 56.94d | 0d | Analista | 4h | 472 |
| 39 | 2.3.3.5.3 | Costos |  | 1h | 2016-05-12 17:00 | 2016-05-12 18:00 | 38 | 56.94d | 0d | Administrador de proyecto | 1h | 164 |
| 40 | 2.3.3.6 | **Riesgos** |  | 1.5d | 2016-05-12 18:00 | 2016-05-14 12:00 |  | 57.69d |  |  | 18h | 2,676 |
| 41 | 2.3.3.6.1 | Identificación de riesgos |  | 6h | 2016-05-12 18:00 | 2016-05-13 16:00 | 39 | 56.94d | 0d | Administrador de proyecto; Analista | 12h | 1,692 |
| 42 | 2.3.3.6.2 | asignación de prioridades |  | 2h | 2016-05-13 16:00 | 2016-05-13 18:00 | 41 | 56.94d | 0d | Administrador de proyecto | 2h | 328 |
| 43 | 2.3.3.6.3 | Plan de mitigación y contingencia |  | 4h | 2016-05-13 18:00 | 2016-05-14 12:00 | 42 | 56.94d | 0d | Administrador de proyecto | 4h | 656 |
| 44 | 2.3.3.7 | **Aseguramiento de la calidad** |  | 0.38d | 2016-05-14 12:00 | 2016-05-16 11:00 |  | 57.69d |  |  | 3h | 390 |
| 45 | 2.3.3.7.1 | Plan de gestión de la configuración |  | 2h | 2016-05-14 12:00 | 2016-05-16 10:00 | 43 | 57.69d | 0d | Administrador de la configuración | 2h | 226 |
| 46 | 2.3.3.7.2 | Junta de arranque de construcción |  | 1h | 2016-05-16 10:00 | 2016-05-16 11:00 | 45 | 56.94d | 0d | Administrador de proyecto | 1h | 164 |
| 47 | 2.3.3.7.3 | tener el ciclo de vida a seguir, actualizar el plan del proyecto así como matriz de comunicaciónes, sacar costos, definicion de riesgos con su plan de mitigación | milestone | 0d | 2016-05-16 11:00 | 2016-05-16 11:00 | 46 | 69.75d |  |  |  |  |
| 48 | 2.3.4 | **Diseño** |  | 2.62d | 2016-05-16 11:00 | 2016-05-18 18:00 |  | 57.69d |  |  | 25h | 2,517 |
| 49 | 2.3.4.1 | Definir la arquitectura |  | 2h | 2016-05-16 11:00 | 2016-05-16 13:00 | 46 | 56.94d | 0d | Diseñador; Administrador de proyecto; Analista | 6h | 750 |
| 50 | 2.3.4.2 | Realizar casos de uso |  | 4h | 2016-05-16 15:00 | 2016-05-16 19:00 | 49 | 56.94d | 0d | Diseñador | 4h | 372 |
| 51 | 2.3.4.3 | Realizar diagramas de secuencia |  | 2h | 2016-05-17 09:00 | 2016-05-17 11:00 | 50 | 56.94d | 0d | Diseñador | 2h | 186 |
| 52 | 2.3.4.4 | Realizar diagramas de clases |  | 1h | 2016-05-17 11:00 | 2016-05-17 12:00 | 51 | 56.94d | 0d | Diseñador | 1h | 93 |
| 53 | 2.3.4.5 | Realizar diagrama de componentes |  | 1h | 2016-05-17 12:00 | 2016-05-17 13:00 | 52 | 56.94d | 0d | Diseñador | 1h | 93 |
| 54 | 2.3.4.6 | Realizar diagrama de despliegue |  | 2h | 2016-05-17 15:00 | 2016-05-17 17:00 | 53 | 56.94d | 0d | Diseñador | 2h | 186 |
| 55 | 2.3.4.7 | Realizar el mapa de navegación |  | 1h | 2016-05-17 17:00 | 2016-05-17 18:00 | 54 | 56.94d | 0d | Diseñador | 1h | 93 |
| 56 | 2.3.4.8 | Realizar maquetado (bocetos) |  | 6h | 2016-05-17 18:00 | 2016-05-18 16:00 | 55 | 56.94d | 0d | Diseñador | 6h | 558 |

Notes:
- 32: Elegir el ciclo de vida a utilizar, tomando en cuenta que se adapte al proyecto
- 33: Establecer las politicas que guiaran a la empresa a cumplir el objetivo
- 34: Restructurar el plan en base a las nuevas observaciones
- 35: Redefinir los entregables así como los encargados de realizar dichos documentos
- 37: Reacomodar tareas a ejecutar dentro de la planeación, así como el tiempo y los recursos
- 38: En base al WBS elaborar la tabla respectiva para cada una de las tareas, donde se especifique el encargado,descripción de la tarea así como un identificador de cada tarea
- 39: Realizar una estimación de los costos de cada uno de los recursos
- 41: Analizar los posibles riesgos que ponen el peligro la conclusión del mismo
- 43: En base a los riesgos establecer un plan que permita solucionar dicho riesgo
- 45: Estructurar el plan de acuerdo a 4 diferentes carpetas donde se almacenan cada uno de los entregables
- 46: Realizar una reunion con todos los involucrados para dar a conocer la planeación y co0menzar con la elaboración del proyecto
- 50: Elaborar los casos de uso que reflejan el como interactua el usuario con el sistema
- 51: Crear en base a los casos de uso los diagramas de secuencia con los pasos de cada acción que realiza el usuario
- 52: Desarrollar los diagramas de clases de cada modulo
- 55: Realizar mapa donde se muestre como esta estructurada la aplicación y asi mismo mostrar como el usuario podra moverse a través de las interfaces
- 56: Integrar la simulación de las interfaces finales de la aplicación

| ID | WBS | Task | Type | Duration | Start | Finish | Predecessors | Total slack | Free slack | Resources | Work | Cost |
| --- | --- | --- | --- | --- | --- | --- | --- | --- | --- | --- | --- | --- |
| 57 | 2.3.4.9 | **Diseño de diagramas de la base de datos** |  | 0.25d | 2016-05-18 16:00 | 2016-05-18 18:00 |  | 57.69d |  |  | 2h | 186 |
| 58 | 2.3.4.9.1 | Realizar el diagrama E-R |  | 1h | 2016-05-18 16:00 | 2016-05-18 17:00 | 56 | 56.94d | 0d | Diseñador | 1h | 93 |
| 59 | 2.3.4.9.2 | Realizar el diagrama Relacional |  | 1h | 2016-05-18 17:00 | 2016-05-18 18:00 | 58 | 56.94d | 0d | Diseñador | 1h | 93 |
| 60 | 2.3.5 | tener la arquitectura a seguir, obtención de diagramas de clases, secuencia, de casos de uso, navegacion, bocetos,E-R Y R | milestone | 0d | 2016-05-18 18:00 | 2016-05-18 18:00 | 59 | 67.12d |  |  |  |  |
| 61 | 2.3.6 | **Codificación** |  | 7.81d | 2016-05-18 18:00 | 2016-05-28 10:30 |  | 6.06d |  |  | 62.5h | 6,634.5 |
| 62 | 2.3.6.1 | Codificación de la base de datos |  | 3h | 2016-05-18 18:00 | 2016-05-19 11:00 | 59 | 56.94d | 0d | Programador | 3h | 315 |
| 63 | 2.3.6.2 | **Modulo Usuarios** |  | 1.06d | 2016-05-19 11:00 | 2016-05-20 11:30 |  | 57.69d |  |  | 8.5h | 892.5 |
| 64 | 2.3.6.2.1 | Codificar interfaz |  | 1h | 2016-05-19 11:00 | 2016-05-19 12:00 | 62 | 56.94d | 0d | Programador | 1h | 105 |
| 65 | 2.3.6.2.2 | Clases de usuario |  | 2h | 2016-05-19 12:00 | 2016-05-19 16:00 | 64 | 56.94d | 0d | Programador | 2h | 210 |
| 66 | 2.3.6.2.3 | Realizar conexión a la base de datos |  | 0.5h | 2016-05-19 16:00 | 2016-05-19 16:30 | 65 | 56.94d | 0d | Programador | 0.5h | 52.5 |
| 67 | 2.3.6.2.4 | Alta de usuario |  | 0.5h | 2016-05-19 16:30 | 2016-05-19 17:00 | 66 | 56.94d | 0d | Programador | 0.5h | 52.5 |
| 68 | 2.3.6.2.5 | Baja de usuario |  | 0.5h | 2016-05-19 17:00 | 2016-05-19 17:30 | 67 | 56.94d | 0d | Programador | 0.5h | 52.5 |
| 69 | 2.3.6.2.6 | Actualización de usuario |  | 1h | 2016-05-19 17:30 | 2016-05-19 18:30 | 68 | 56.94d | 0d | Programador | 1h | 105 |
| 70 | 2.3.6.2.7 | Consultas de usuario |  | 1h | 2016-05-19 18:30 | 2016-05-20 09:30 | 69 | 56.94d | 0d | Programador | 1h | 105 |
| 71 | 2.3.6.2.8 | Reportes de usuario |  | 2h | 2016-05-20 09:30 | 2016-05-20 11:30 | 70 | 56.94d | 0d | Programador | 2h | 210 |
| 72 | 2.3.6.3 | **FRONTEND** |  | 1.06d | 2016-05-20 11:30 | 2016-05-21 12:00 |  | 57.69d |  |  | 8.5h | 892.5 |
| 73 | 2.3.6.3.1 | **Modulo inicio** |  | 0.25d | 2016-05-20 11:30 | 2016-05-20 15:30 |  | 57.69d |  |  | 2h | 210 |
| 74 | 2.3.6.3.1.1 | Codificar interfaz |  | 1h | 2016-05-20 11:30 | 2016-05-20 12:30 | 71 | 56.94d | 0d | Programador | 1h | 105 |
| 75 | 2.3.6.3.1.2 | Clases de inicio |  | 1h | 2016-05-20 12:30 | 2016-05-20 15:30 | 74 | 56.94d | 0d | Programador | 1h | 105 |
| 76 | 2.3.6.3.2 | **Modulo login** |  | 0.31d | 2016-05-20 15:30 | 2016-05-20 18:00 |  | 57.69d |  |  | 2.5h | 262.5 |
| 77 | 2.3.6.3.2.1 | Codificar interfaz |  | 1h | 2016-05-20 15:30 | 2016-05-20 16:30 | 75 | 56.94d | 0d | Programador | 1h | 105 |
| 78 | 2.3.6.3.2.2 | Clases de login |  | 1h | 2016-05-20 16:30 | 2016-05-20 17:30 | 77 | 56.94d | 0d | Programador | 1h | 105 |
| 79 | 2.3.6.3.2.3 | Realizar conexión a la base de datos |  | 0.5h | 2016-05-20 17:30 | 2016-05-20 18:00 | 78 | 56.94d | 0d | Programador | 0.5h | 52.5 |
| 80 | 2.3.6.3.3 | **Modulo historia** |  | 0.12d | 2016-05-20 18:00 | 2016-05-20 19:00 |  | 57.69d |  |  | 1h | 105 |
| 81 | 2.3.6.3.3.1 | Codificar interfaz |  | 1h | 2016-05-20 18:00 | 2016-05-20 19:00 | 79 | 56.94d | 0d | Programador | 1h | 105 |

Notes:
- 58: Plasmar en el diagrama las entidades con sus respectivos atributos y relaciones
- 59: En base al diagrama E-R integrar las cardinalidades en las relaciones de las tablas
- 62: En base al diagrama relacional codificar las tablas que integrarán la base de datos
- 64: Estructurar la interfaz utilizando patrones de diseño,bootstrap, css,html5
- 65: En base al diagrama de clases codificar la clase del usuario para dar altas, bajas y modificaciones
- 66: realizar la codificación para crear la conexión del sistema con la base de datos
- 67: Codificar la función de dar alta un usuario
- 68: Codificar la función de baja un usuario
- 69: Codificar la función de actualizar un usuario
- 70: Codificar la función que realiza las consultas de usuario
- 71: codificar la función para realizar reportes de usuario
- 74: Estructurar la interfaz utilizando patrones de diseño,bootstrap, css,html5
- 75: En base al diagrama de clases codificar la clase de inicio de sesion
- 77: Estructurar la interfaz utilizando patrones de diseño,bootstrap, css,html5
- 81: Estructurar la interfaz utilizando patrones de diseño,bootstrap, css,html5

| ID | WBS | Task | Duration | Start | Finish | Predecessors | Total slack | Free slack | Resources | Work | Cost |
| --- | --- | --- | --- | --- | --- | --- | --- | --- | --- | --- | --- |
| 82 | 2.3.6.3.4 | **Modulo Talleres** | 0.12d | 2016-05-21 09:00 | 2016-05-21 10:00 |  | 57.69d |  |  | 1h | 105 |
| 83 | 2.3.6.3.4.1 | Codificar interfaz | 1h | 2016-05-21 09:00 | 2016-05-21 10:00 | 81 | 56.94d | 0d | Programador | 1h | 105 |
| 84 | 2.3.6.3.5 | **Modulo galeria** | 0.12d | 2016-05-21 10:00 | 2016-05-21 11:00 |  | 57.69d |  |  | 1h | 105 |
| 85 | 2.3.6.3.5.1 | Codificar interfaz | 1h | 2016-05-21 10:00 | 2016-05-21 11:00 | 83 | 56.94d | 0d | Programador | 1h | 105 |
| 86 | 2.3.6.3.6 | **Modulo horario** | 0.12d | 2016-05-21 11:00 | 2016-05-21 12:00 |  | 57.69d |  |  | 1h | 105 |
| 87 | 2.3.6.3.6.1 | Codificar interfaz | 1h | 2016-05-21 11:00 | 2016-05-21 12:00 | 85 | 56.94d | 0d | Programador | 1h | 105 |
| 88 | 2.3.6.4 | **BACKEND** | 4.56d | 2016-05-21 12:00 | 2016-05-27 12:30 |  | 3.56d |  |  | 36.5h | 3,832.5 |
| 89 | 2.3.6.4.1 | **Modulo CPANEL** | 0.5d | 2016-05-21 12:00 | 2016-05-23 12:00 |  | 57.69d |  |  | 4h | 420 |
| 90 | 2.3.6.4.1.1 | Codificar interfaz | 1h | 2016-05-21 12:00 | 2016-05-21 13:00 | 87 | 56.94d | 0d | Programador | 1h | 105 |
| 91 | 2.3.6.4.1.2 | Clases de CPANEL | 2h | 2016-05-23 09:00 | 2016-05-23 11:00 | 90 | 56.94d | 0d | Programador | 2h | 210 |
| 92 | 2.3.6.4.1.3 | Realizar conexión a la base de datos | 1h | 2016-05-23 11:00 | 2016-05-23 12:00 | 91 | 56.94d | 0d | Programador | 1h | 105 |
| 93 | 2.3.6.4.2 | **Modulo Alumnos** | 1d | 2016-05-23 12:00 | 2016-05-24 12:00 |  | 57.69d |  |  | 8h | 840 |
| 94 | 2.3.6.4.2.1 | Codificar interfaz | 1h | 2016-05-23 12:00 | 2016-05-23 13:00 | 92 | 57.69d | 0d | Programador | 1h | 105 |
| 95 | 2.3.6.4.2.2 | Clases de alumnos | 1h | 2016-05-23 15:00 | 2016-05-23 16:00 | 94 | 57.69d | 0d | Programador | 1h | 105 |
| 96 | 2.3.6.4.2.3 | Realizar conexión a la base de datos | 1h | 2016-05-23 16:00 | 2016-05-23 17:00 | 95 | 57.69d | 0d | Programador | 1h | 105 |
| 97 | 2.3.6.4.2.4 | Alta de alumnos | 1h | 2016-05-23 17:00 | 2016-05-23 18:00 | 96 | 57.69d | 0d | Programador | 1h | 105 |
| 98 | 2.3.6.4.2.5 | Baja de alumnos | 1h | 2016-05-23 18:00 | 2016-05-23 19:00 | 97 | 57.69d | 0d | Programador | 1h | 105 |
| 99 | 2.3.6.4.2.6 | Actualización de alumnos | 1h | 2016-05-24 09:00 | 2016-05-24 10:00 | 98 | 57.69d | 0d | Programador | 1h | 105 |
| 100 | 2.3.6.4.2.7 | Consultas de alumnos | 1h | 2016-05-24 10:00 | 2016-05-24 11:00 | 99 | 57.69d | 0d | Programador | 1h | 105 |
| 101 | 2.3.6.4.2.8 | Reportes de alumnos | 1h | 2016-05-24 11:00 | 2016-05-24 12:00 | 100 | 57.69d | 0d | Programador | 1h | 105 |
| 102 | 2.3.6.4.3 | **Modulo profesores** | 1.06d | 2016-05-24 12:00 | 2016-05-25 12:30 |  | 57.69d |  |  | 8.5h | 892.5 |
| 103 | 2.3.6.4.3.1 | Codificar interfaz | 1h | 2016-05-24 12:00 | 2016-05-24 13:00 | 101 | 57.69d | 0d | Programador | 1h | 105 |
| 104 | 2.3.6.4.3.2 | Clases de profesores | 1h | 2016-05-24 15:00 | 2016-05-24 16:00 | 103 | 57.69d | 0d | Programador | 1h | 105 |
| 105 | 2.3.6.4.3.3 | Realizar conexión a la base de datos | 1h | 2016-05-24 16:00 | 2016-05-24 17:00 | 104 | 57.69d | 0d | Programador | 1h | 105 |
| 106 | 2.3.6.4.3.4 | Alta de profesores | 1.5h | 2016-05-24 17:00 | 2016-05-24 18:30 | 105 | 57.69d | 0d | Programador | 1.5h | 157.5 |
| 107 | 2.3.6.4.3.5 | Baja de profesores | 1h | 2016-05-24 18:30 | 2016-05-25 09:30 | 106 | 57.69d | 0d | Programador | 1h | 105 |
| 108 | 2.3.6.4.3.6 | Actualización de profesores | 1h | 2016-05-25 09:30 | 2016-05-25 10:30 | 107 | 57.69d | 0d | Programador | 1h | 105 |
| 109 | 2.3.6.4.3.7 | Consultas de profesores | 1h | 2016-05-25 10:30 | 2016-05-25 11:30 | 108 | 57.69d | 0d | Programador | 1h | 105 |
| 110 | 2.3.6.4.3.8 | Reportes de profesores | 1h | 2016-05-25 11:30 | 2016-05-25 12:30 | 109 | 57.69d | 0d | Programador | 1h | 105 |

Notes:
- 83: Estructurar la interfaz utilizando patrones de diseño,bootstrap, css,html5
- 85: Estructurar la interfaz utilizando patrones de diseño,bootstrap, css,html5
- 87: Estructurar la interfaz utilizando patrones de diseño,bootstrap, css,html5
- 90: Estructurar la interfaz utilizando patrones de diseño,bootstrap, css,html5
- 91: En base al diagrama de clases codificar la clase de CPANLE
- 92: realizar la codificación para crear la conexión del sistema con la base de datos
- 94: Estructurar la interfaz utilizando patrones de diseño,bootstrap, css,html5
- 95: En base al diagrama de clases codificar la clase de alumnos
- 96: realizar la codificación para crear la conexión del sistema con la base de datos
- 97: Codificar la función de dar alta un alumno
- 98: Codificar la función de dar de baja un alumno
- 99: Codificar la función de actualizar un alumno
- 100: Codificar la función para hacer una consulta de alumno
- 101: Codificar la función para hacer un reporte de alumno
- 103: Estructurar la interfaz utilizando patrones de diseño,bootstrap, css,html5
- 104: En base al diagrama de clases codificar la clase de profesores
- 105: realizar la codificación para crear la conexión del sistema con la base de datos
- 106: Codificar la función para dar de alta un profesor
- 107: Codificar la función para dar de baja un profesor
- 108: Codificar la función para actualizar un profesor
- 109: Codificar la función para hacer una consulta de profesores
- 110: Codificar la función para hacer un reporte de alumno

| ID | WBS | Task | Type | Duration | Start | Finish | Predecessors | Total slack | Free slack | Resources | Work | Cost |
| --- | --- | --- | --- | --- | --- | --- | --- | --- | --- | --- | --- | --- |
| 111 | 2.3.6.4.4 | **Modulo horarios** |  | 1d | 2016-05-25 12:30 | 2016-05-26 12:30 |  | 57.69d |  |  | 8h | 840 |
| 112 | 2.3.6.4.4.1 | Codificar interfaz |  | 1h | 2016-05-25 12:30 | 2016-05-25 15:30 | 110 | 57.69d | 0d | Programador | 1h | 105 |
| 113 | 2.3.6.4.4.2 | Clases de horarios |  | 1h | 2016-05-25 15:30 | 2016-05-25 16:30 | 112 | 57.69d | 0d | Programador | 1h | 105 |
| 114 | 2.3.6.4.4.3 | Realizar conexión a la base de datos |  | 1h | 2016-05-25 16:30 | 2016-05-25 17:30 | 113 | 57.69d | 0d | Programador | 1h | 105 |
| 115 | 2.3.6.4.4.4 | Alta de horarios |  | 1h | 2016-05-25 17:30 | 2016-05-25 18:30 | 114 | 57.69d | 0d | Programador | 1h | 105 |
| 116 | 2.3.6.4.4.5 | Baja de horarios |  | 1h | 2016-05-25 18:30 | 2016-05-26 09:30 | 115 | 57.69d | 0d | Programador | 1h | 105 |
| 117 | 2.3.6.4.4.6 | Actualización de horarios |  | 1h | 2016-05-26 09:30 | 2016-05-26 10:30 | 116 | 57.69d | 0d | Programador | 1h | 105 |
| 118 | 2.3.6.4.4.7 | Consultas de horarios |  | 1h | 2016-05-26 10:30 | 2016-05-26 11:30 | 117 | 57.69d | 0d | Programador | 1h | 105 |
| 119 | 2.3.6.4.4.8 | Reportes de horarios |  | 1h | 2016-05-26 11:30 | 2016-05-26 12:30 | 118 | 57.69d | 0d | Programador | 1h | 105 |
| 120 | 2.3.6.4.5 | **Modulo talleres** |  | 1d | 2016-05-26 12:30 | 2016-05-27 12:30 |  | 0d |  |  | 8h | 840 |
| 121 | 2.3.6.4.5.1 | Codificar interfaz |  | 1h | 2016-05-26 12:30 | 2016-05-26 15:30 | 119 | 57.69d | 0d | Programador | 1h | 105 |
| 122 | 2.3.6.4.5.2 | Clases de talleres |  | 1h | 2016-05-26 15:30 | 2016-05-26 16:30 | 121 | 57.69d | 0d | Programador | 1h | 105 |
| 123 | 2.3.6.4.5.3 | Realizar conexión a la base de datos |  | 1h | 2016-05-26 16:30 | 2016-05-26 17:30 | 122 | 57.69d | 0d | Programador | 1h | 105 |
| 124 | 2.3.6.4.5.4 | Alta de taller |  | 1h | 2016-05-26 17:30 | 2016-05-26 18:30 | 123 | 57.69d | 0d | Programador | 1h | 105 |
| 125 | 2.3.6.4.5.5 | Baja de taller |  | 1h | 2016-05-26 18:30 | 2016-05-27 09:30 | 124 | 57.69d | 0d | Programador | 1h | 105 |
| 126 | 2.3.6.4.5.6 | Actualización de taller |  | 1h | 2016-05-27 09:30 | 2016-05-27 10:30 | 125 | 57.69d | 0d | Programador | 1h | 105 |
| 127 | 2.3.6.4.5.7 | Consultas de taller |  | 1h | 2016-05-27 10:30 | 2016-05-27 11:30 | 126 | 57.69d | 0d | Programador | 1h | 105 |
| 128 | 2.3.6.4.5.8 | Reportes de taller |  | 1h | 2016-05-27 11:30 | 2016-05-27 12:30 | 127 | 57.69d | 0d | Programador | 1h | 105 |
| 129 | 2.3.6.4.5.9 | entrega de el sistema funcional con todos sus modulos integrados | milestone, manual | 0d | 2016-05-26 12:30 | 2016-05-26 12:30 |  |  |  |  |  |  |
| 130 | 2.3.6.5 | **Pruebas** |  | 0.75d | 2016-05-27 12:30 | 2016-05-28 10:30 |  | 57.69d |  |  | 6h | 702 |
| 131 | 2.3.6.5.1 | **Realizar pruebas de caja blanca** |  | 0.75d | 2016-05-27 12:30 | 2016-05-28 10:30 |  | 57.69d |  |  | 6h | 702 |
| 132 | 2.3.6.5.1.1 | **Módulos de usuarios** |  | 0.12d | 2016-05-27 12:30 | 2016-05-27 15:30 |  | 57.69d |  |  | 1h | 117 |
| 133 | 2.3.6.5.1.1.1 | Pruebas unitarias |  | 1h | 2016-05-27 12:30 | 2016-05-27 15:30 | 128 | 57.69d | 0d | Tester | 1h | 117 |
| 134 | 2.3.6.5.1.2 | **Módulos de login** |  | 0.62d | 2016-05-27 15:30 | 2016-05-28 10:30 |  | 57.69d |  |  | 5h | 585 |
| 135 | 2.3.6.5.1.2.1 | Pruebas unitarias |  | 1h | 2016-05-27 15:30 | 2016-05-27 16:30 | 133 | 57.69d | 0d | Tester | 1h | 117 |

Notes:
- 112: Estructurar la interfaz utilizando patrones de diseño,bootstrap, css,html5
- 113: En base al diagrama de clases codificar la clase de horarios
- 114: realizar la codificación para crear la conexión del sistema con la base de datos
- 115: Codificar la función para dar de alta un horario
- 116: Codificar la función para dar de baja un horario
- 117: Codificar la función para actualizar un horario
- 118: Codificar la función para hacer una consulta de horarios
- 119: Codificar la función para hacer un reporte de horario
- 121: Estructurar la interfaz utilizando patrones de diseño,bootstrap, css,html5
- 122: En base al diagrama de clases codificar la clase de taller
- 123: realizar la codificación para crear la conexión del sistema con la base de datos
- 124: Codificar la función para dar de alta un taller
- 125: Codificar la función para dar de baja un taller
- 126: Codificar la función para actualizar un taller
- 127: Codificar la función para hacer una consulta de taller
- 128: Codificar la función para hacer una reporte de taller
- 133: Realizar Pruebas para probar el correcto funcionamiento del modulo de usuarios
- 135: Realizar Pruebas para probar el correcto funcionamiento del modulo de login

| ID | WBS | Task | Type | Duration | Start | Finish | Predecessors | Total slack | Free slack | Resources | Work | Cost |
| --- | --- | --- | --- | --- | --- | --- | --- | --- | --- | --- | --- | --- |
| 136 | 2.3.6.5.1.2.2 | **Módulos de talleres** |  | 0.12d | 2016-05-27 16:30 | 2016-05-27 17:30 |  | 57.69d |  |  | 1h | 117 |
| 137 | 2.3.6.5.1.2.2.1 | Pruebas unitarias |  | 1h | 2016-05-27 16:30 | 2016-05-27 17:30 | 135 | 57.69d | 0d | Tester | 1h | 117 |
| 138 | 2.3.6.5.1.2.3 | **Módulos de alumnos** |  | 0.12d | 2016-05-27 17:30 | 2016-05-27 18:30 |  | 57.69d |  |  | 1h | 117 |
| 139 | 2.3.6.5.1.2.3.1 | Pruebas unitarias |  | 1h | 2016-05-27 17:30 | 2016-05-27 18:30 | 137 | 57.69d | 0d | Tester | 1h | 117 |
| 140 | 2.3.6.5.1.2.4 | **Módulos de profesores** |  | 0.12d | 2016-05-27 18:30 | 2016-05-28 09:30 |  | 57.69d |  |  | 1h | 117 |
| 141 | 2.3.6.5.1.2.4.1 | Pruebas unitarias |  | 1h | 2016-05-27 18:30 | 2016-05-28 09:30 | 139 | 57.69d | 0d | Tester | 1h | 117 |
| 142 | 2.3.6.5.1.2.5 | **Módulos de horarios** |  | 0.12d | 2016-05-28 09:30 | 2016-05-28 10:30 |  | 57.69d |  |  | 1h | 117 |
| 143 | 2.3.6.5.1.2.5.1 | Pruebas unitarias |  | 1h | 2016-05-28 09:30 | 2016-05-28 10:30 | 141 | 57.69d | 0d | Tester | 1h | 117 |
| 144 | 2.3.7 | entregar el sistema con pruevas realizadas y con posibles errores corregidos | milestone | 0d | 2016-05-03 18:00 | 2016-05-03 18:00 |  | 79.12d |  |  |  |  |
| 145 | 2.3.8 | **Implementación** |  | 0.75d | 2016-05-28 10:30 | 2016-05-30 12:30 |  | 57.69d |  |  | 7h | 818 |
| 146 | 2.3.8.1 | Evaluación del hosting |  | 1h | 2016-05-28 10:30 | 2016-05-28 11:30 | 143 | 57.69d | 0d | Programador; Administrador de proyecto | 2h | 269 |
| 147 | 2.3.8.2 | Implementar el sitio al hosting |  | 1h | 2016-05-28 11:30 | 2016-05-28 12:30 | 146 | 57.69d | 0d | Programador | 1h | 105 |
| 148 | 2.3.8.3 | Manual de usuario |  | 1h | 2016-05-28 12:30 | 2016-05-30 09:30 | 147 | 57.69d | 0d | Programador | 1h | 105 |
| 149 | 2.3.8.4 | Capacitación |  | 1h | 2016-05-30 09:30 | 2016-05-30 10:30 | 148 | 57.69d | 0d | Programador | 1h | 105 |
| 150 | 2.3.8.5 | **Realizar pruebas de caja blanca** |  | 0.25d | 2016-05-30 10:30 | 2016-05-30 12:30 |  | 57.69d |  |  | 2h | 234 |
| 151 | 2.3.8.5.1 | Pruebas de rendimiento |  | 1h | 2016-05-30 10:30 | 2016-05-30 11:30 | 149 | 57.69d | 0d | Tester | 1h | 117 |
| 152 | 2.3.8.5.2 | Pruebas de sistema |  | 1h | 2016-05-30 11:30 | 2016-05-30 12:30 | 151 | 57.69d | 0d | Tester | 1h | 117 |
| 153 | 2.3.9 | elegir el hosting en base a preci, espacio y seguridad, subir el sitio a dicho hosting, el manual de usuario contendra una explicacion de como utilizar la aplicación | milestone | 0d | 2016-05-30 12:30 | 2016-05-30 12:30 | 152 | 58.56d |  |  |  |  |
| 154 | 2.3.10 | **Cierre de proyecto** |  | 0.88d | 2016-05-30 12:30 | 2016-05-31 11:30 |  | 57.69d |  |  | 10h | 1,240 |
| 155 | 2.3.10.1 | Carta de aceptación |  | 1h | 2016-05-30 12:30 | 2016-05-30 15:30 | 152 | 57.69d | 0d | Cliente; Administrador de proyecto | 2h | 164 |
| 156 | 2.3.10.2 | Acta de cierre de proyecto |  | 1h | 2016-05-30 15:30 | 2016-05-30 16:30 | 155 | 57.69d | 0d | Administrador de proyecto | 1h | 164 |
| 157 | 2.3.10.3 | Evaluación de desempeño |  | 1h | 2016-05-30 16:30 | 2016-05-30 17:30 | 156 | 57.69d | 0d | Administrador de proyecto | 1h | 164 |
| 158 | 2.3.10.4 | Junta de lecciones aprendidas |  | 1h | 2016-05-30 17:30 | 2016-05-30 18:30 | 157 | 57.69d | 0d | Administrador de proyecto | 1h | 164 |
| 159 | 2.3.10.5 | Revisión de adherencias de procesos |  | 1h | 2016-05-30 18:30 | 2016-05-31 09:30 | 158 | 57.69d | 0d | Administrador de proyecto; Asegurador de la calidad | 2h | 256 |
| 160 | 2.3.10.6 | Liberación de los recursos |  | 1h | 2016-05-31 09:30 | 2016-05-31 10:30 | 159 | 57.69d | 0d | Administrador de proyecto | 1h | 164 |
| 161 | 2.3.10.7 | Informe final(cierre) |  | 1h | 2016-05-31 10:30 | 2016-05-31 11:30 | 160 | 57.69d | 0d | Administrador de proyecto; Cliente | 2h | 164 |
| 162 | 2.3.10.8 | carta de aceptación debe ser firmada por el cliente asi como la liberación de recursos | milestone | 0d | 2016-05-31 11:30 | 2016-05-31 11:30 | 161 | 57.69d |  |  |  |  |

Notes:
- 137: Realizar Pruebas para probar el correcto funcionamiento del modulo de talleres
- 139: Realizar Pruebas para probar el correcto funcionamiento del modulo de alumnos
- 141: Realizar Pruebas para probar el correcto funcionamiento del modulo de profesores
- 143: Realizar Pruebas para probar el correcto funcionamiento del modulo de horarios
- 146: Realizar una investigación de los diferentes hosting y así elegir el mejor
- 147: subir el sitio al servidor
- 148: crear un manual para el usuario donde se describa la funcionalidad del sitio
- 149: Dar una explicación acerca de como utilizar el sistema
- 151: Revisa el rendimiento para determinar la rapidez en que se realiza la tarea en el sistema así como también validar y verificar algunos atributos de la calidad del sistema
- 152: realizar pruebas basandonos en lo requerimientos y la funcionalidad del sistema
- 155: realizar el documento donde el cliente nos firme que esta de acuerdo con el sistema que se le entrego
- 156: realizar una acta donde se muestre la culminación del proyecto
- 157: evaluar el trabajo y la conducta que tubieron los integrantes del proyecto
- 158: hacer una reunion donde los integrantes de proyecto para que den su punto de vista hacerca de los problemas que presentaron a la hora de realizar el proyecto y con esto aprender y poder mitigar el problema
- 159: son las revisiones de todos los procesos aplicados en el sistema
- 160: se liberan los gastos y cobran la totalidad del proyecto
- 161: se realiza una carta de finalización de proyecto donde el cliente firma si esta de acuerdo con el proyecto

| ID | WBS | Task | Type | Duration | Start | Finish | Total slack | Constraint | Resources |
| --- | --- | --- | --- | --- | --- | --- | --- | --- | --- |
| 165 | 2.3.11 | **Revisión** |  | 77d | 2016-05-06 09:00 | 2016-08-12 09:00 | 0d |  |  |
| 166 | 2.3.11.1 | Revisión 1 | milestone, manual | 0d | 2016-05-06 09:00 | 2016-05-06 09:00 |  | start no earlier than 2016-05-06 09:00 | Administrador de proyecto; Asegurador de la calidad |
| 167 | 2.3.11.2 | Revisión 2 | milestone, manual | 0d | 2016-05-13 09:00 | 2016-05-13 09:00 |  | start no earlier than 2016-05-13 09:00 | Administrador de proyecto; Asegurador de la calidad |
| 168 | 2.3.11.3 | Revisión 3 | milestone, manual | 0d | 2016-05-20 09:00 | 2016-05-20 09:00 |  | start no earlier than 2016-05-20 09:00 | Administrador de proyecto; Asegurador de la calidad |
| 169 | 2.3.11.4 | Revisión 4 | milestone, manual | 0d | 2016-05-27 09:00 | 2016-05-27 09:00 |  | start no earlier than 2016-05-27 09:00 | Administrador de proyecto; Asegurador de la calidad |
| 170 | 2.3.11.5 | Revisión 5 | milestone, manual | 0d | 2016-06-03 09:00 | 2016-06-03 09:00 |  | start no earlier than 2016-06-03 09:00 | Administrador de proyecto; Asegurador de la calidad |
| 171 | 2.3.11.6 | Revisión 6 | milestone, manual | 0d | 2016-06-10 09:00 | 2016-06-10 09:00 |  | start no earlier than 2016-06-10 09:00 | Administrador de proyecto; Asegurador de la calidad |
| 172 | 2.3.11.7 | Revisión 7 | milestone, manual | 0d | 2016-06-17 09:00 | 2016-06-17 09:00 |  | start no earlier than 2016-06-17 09:00 | Administrador de proyecto; Asegurador de la calidad |
| 173 | 2.3.11.8 | Revisión 8 | milestone, manual | 0d | 2016-06-24 09:00 | 2016-06-24 09:00 |  | start no earlier than 2016-06-24 09:00 | Administrador de proyecto; Asegurador de la calidad |
| 174 | 2.3.11.9 | Revisión 9 | milestone, manual | 0d | 2016-07-01 09:00 | 2016-07-01 09:00 |  | start no earlier than 2016-07-01 09:00 | Administrador de proyecto; Asegurador de la calidad |
| 175 | 2.3.11.10 | Revisión 10 | milestone, manual | 0d | 2016-07-08 09:00 | 2016-07-08 09:00 |  | start no earlier than 2016-07-08 09:00 | Administrador de proyecto; Asegurador de la calidad |
| 176 | 2.3.11.11 | Revisión 11 | milestone, manual | 0d | 2016-07-15 09:00 | 2016-07-15 09:00 |  | start no earlier than 2016-07-15 09:00 | Administrador de proyecto; Asegurador de la calidad |
| 177 | 2.3.11.12 | Revisión 12 | milestone, manual | 0d | 2016-07-22 09:00 | 2016-07-22 09:00 |  | start no earlier than 2016-07-22 09:00 | Administrador de proyecto; Asegurador de la calidad |
| 178 | 2.3.11.13 | Revisión 13 | milestone, manual | 0d | 2016-07-29 09:00 | 2016-07-29 09:00 |  | start no earlier than 2016-07-29 09:00 | Administrador de proyecto; Asegurador de la calidad |
| 179 | 2.3.11.14 | Revisión 14 | milestone, manual | 0d | 2016-08-05 09:00 | 2016-08-05 09:00 |  | start no earlier than 2016-08-05 09:00 | Administrador de proyecto; Asegurador de la calidad |
| 180 | 2.3.11.15 | Revisión 15 | milestone, manual | 0d | 2016-08-12 09:00 | 2016-08-12 09:00 |  | start no earlier than 2016-08-12 09:00 | Administrador de proyecto; Asegurador de la calidad |
